# Carta Gantt 11-09-2011

Schedule from MS Project, 2011-03-16 to 2011-12-15, 3 hours a day, A marks actual dates.
WindowsWolf.com.ar

## Calendars

- Calendario de Proyecto: Mon-Sat 18:00-21:00; Sun off. Exceptions (off unless hours are given): 2011-04-24, 2011-10-01 18:00-22:00, 2011-10-03 to 2011-10-08 18:00-22:00, 2011-10-10 to 2011-10-15 18:00-22:00, 2011-10-17 to 2011-10-22 18:00-22:00, 2011-10-24 to 2011-10-29 18:00-22:00, 2011-10-31 to 2011-11-05 18:00-22:00, 2011-11-07 to 2011-11-12 18:00-22:00, 2011-11-14 to 2011-11-19 18:00-22:00, 2011-11-21 to 2011-11-26 18:00-22:00, 2011-11-28 to 2011-11-30 18:00-22:00.

## Resources

| Resource |
| --- |
| Jefe de Proyecto |
| Tester |
| Arquitecto de Solucion |
| Ar |
| Jefe de Des; Desarollador 1 |
| 2 |

## Schedule

| ID | WBS | Task | Duration | Start | Finish | Predecessors | Complete | Remaining | Total slack | Free slack | Constraint | Deadline |
| --- | --- | --- | --- | --- | --- | --- | --- | --- | --- | --- | --- | --- |
| 1 | 1 | **Proyecto de Software de Apoyo a la LectoEscritura** | 253.33d | 2011-03-16 18:00 A | 2011-12-15 21:00 |  | 67% | 84d | -40.67d | 0d |  | 2011-04-10 19:00 |
| 2 | 1.1 | **Planeacion o Pre-Analisis** | 16.67d | 2011-03-16 18:00 A | 2011-04-04 20:00 A |  | 100% |  |  |  |  |  |
| 3 | 1.1.1 | **Solucion Propuesta** | 16.67d | 2011-03-16 18:00 A | 2011-04-04 20:00 A |  | 100% |  |  |  |  |  |
| 4 | 1.1.1.1 | Identificacion del Problema | 14h | 2011-03-16 18:00 A | 2011-03-21 20:00 A |  | 100% |  |  |  |  |  |
| 5 | 1.1.1.2 | **Solucion a la Problemática** | 12d | 2011-03-21 20:00 A | 2011-04-04 20:00 A |  | 100% |  |  |  |  |  |
| 6 | 1.1.1.2.1 | Objetivos | 4h | 2011-03-21 20:00 A | 2011-03-22 21:00 A | 4 | 100% |  |  |  |  |  |
| 7 | 1.1.1.2.2 | Alcance | 4h | 2011-03-23 18:00 A | 2011-03-24 19:00 A | 6 | 100% |  |  |  |  |  |
| 8 | 1.1.1.2.3 | Organigrama y Responsabilidades | 7h | 2011-03-24 19:00 A | 2011-03-26 20:00 A | 7 | 100% |  |  |  |  |  |
| 9 | 1.1.1.2.4 | **Planificacion Solucion** | 4d | 2011-03-26 20:00 A | 2011-03-31 20:00 A | 8 | 100% |  |  |  |  |  |
| 10 | 1.1.1.2.4.1 | WBS | 7h | 2011-03-26 20:00 A | 2011-03-29 21:00 A |  | 100% |  |  |  |  |  |
| 11 | 1.1.1.2.4.2 | Carta Gantt | 5h | 2011-03-30 18:00 A | 2011-03-31 20:00 A | 10 | 100% |  |  |  |  |  |
| 12 | 1.1.1.2.5 | Factores Criticos | 6h | 2011-03-31 20:00 A | 2011-04-02 20:00 A | 9 | 100% |  |  |  |  |  |
| 13 | 1.1.1.2.6 | Condiciones Comerciales | 3h | 2011-04-02 20:00 A | 2011-04-04 20:00 A | 12 | 100% |  |  |  |  |  |
| 14 | 1.1.1.3 | Hitos de Control | 3h | 2011-03-21 20:00 A | 2011-03-22 20:00 A | 4 | 100% |  |  |  |  |  |
| 15 | 1.1.1.4 | WBS Modificada | 20min | 2011-03-22 20:00 A | 2011-03-22 20:20 A | 14 | 100% |  |  |  |  |  |
| 16 | 1.1.1.5 | Carta Gantt Modificada | 4h | 2011-03-22 20:20 A | 2011-03-24 18:20 A | 15 | 100% |  |  |  |  |  |
| 17 | 1.1.1.6 | Reunion N º 1 | 1h | 2011-03-16 18:00 A | 2011-03-16 19:00 A |  | 100% |  |  |  |  |  |
| 18 | 1.1.1.7 | Reunion N º 2 | 1h | 2011-04-01 18:00 A | 2011-04-01 19:00 A |  | 100% |  |  |  | start no earlier than 2011-04-01 18:00 |  |
| 19 | 1.1.1.8 | Retraso en las Actividades | 10h | 2011-03-24 18:20 A | 2011-03-28 19:20 A | 16 | 100% |  |  |  |  |  |
| 20 | 1.2 | **Analisis** | 37.67d | 2011-04-04 20:00 A | 2011-05-18 19:00 A | 2 | 100% |  |  |  |  |  |
| 21 | 1.2.1 | **Reuniones Clienta** | 17.67d | 2011-04-04 20:00 A | 2011-04-25 19:00 A |  | 100% |  |  |  |  |  |
| 22 | 1.2.1.1 | Reunion N º 3 | 30min | 2011-04-04 20:00 A | 2011-04-04 20:30 A |  | 100% |  |  |  |  |  |
| 23 | 1.2.1.2 | Reunion N º 4 | 1h | 2011-04-25 18:00 A | 2011-04-25 19:00 A | 22 | 100% |  |  |  | start no earlier than 2011-04-25 18:00 |  |
| 24 | 1.2.2 | Planificacion Analisis | 1h | 2011-04-04 20:00 A | 2011-04-04 21:00 A |  | 100% |  |  |  |  |  |

| ID | WBS | Task | Duration | Start | Finish | Predecessors | Complete | Constraint |
| --- | --- | --- | --- | --- | --- | --- | --- | --- |
| 25 | 1.2.3 | **Analisis de Riesgo** | 2.67d | 2011-04-05 18:00 A | 2011-04-07 20:00 A |  | 100% |  |
| 26 | 1.2.3.1 | Informe de Analisis de Riesgo | 8h | 2011-04-05 18:00 A | 2011-04-07 20:00 A | 24 | 100% |  |
| 27 | 1.2.4 | **Ingenieria de Requerimientos** | 10d | 2011-04-07 20:00 A | 2011-04-19 20:00 A |  | 100% |  |
| 28 | 1.2.4.1 | Informe de Especificacion de Requerimientos | 30h | 2011-04-07 20:00 A | 2011-04-19 20:00 A | 26 | 100% |  |
| 29 | 1.2.5 | Estudio de Habilidades Para Construir el SW | 12h | 2011-04-19 20:00 A | 2011-04-23 20:00 A | 28 | 100% |  |
| 30 | 1.2.6 | **Descripcion Comportamiento Niños** | 2d | 2011-04-23 20:00 A | 2011-04-26 20:00 A |  | 100% |  |
| 31 | 1.2.6.1 | Informe comportamiento niños sala de clase | 6h | 2011-04-23 20:00 A | 2011-04-26 20:00 A | 29 | 100% |  |
| 32 | 1.2.7 | Estudio comparativo de SW's en el Mercado | 5h | 2011-04-26 20:00 A | 2011-04-28 19:00 A | 31 | 100% |  |
| 33 | 1.2.8 | **Definir Actividades que tendra SW** | 2.67d | 2011-04-28 19:00 A | 2011-04-30 21:00 A |  | 100% |  |
| 34 | 1.2.8.1 | Informe con las actividades para aprender habilidades especificadas | 8h | 2011-04-28 19:00 A | 2011-04-30 21:00 A | 32 | 100% |  |
| 35 | 1.2.9 | Hitos de Control | 30min | 2011-05-02 18:00 A | 2011-05-02 18:30 A | 34 | 100% |  |
| 36 | 1.2.10 | WBS Modificada | 3h | 2011-05-02 18:00 A | 2011-05-02 21:00 A | 34 | 100% |  |
| 37 | 1.2.11 | Carta Gantt Modificada | 4h | 2011-05-03 18:00 A | 2011-05-04 19:00 A | 36 | 100% |  |
| 38 | 1.2.12 | Retraso en Actividades | 12d | 2011-05-04 19:00 A | 2011-05-18 19:00 A | 37 | 100% |  |
| 39 | 1.3 | **Diseño** | 116.67d | 2011-05-18 19:00 A | 2011-09-30 21:00 A | 20 | 100% |  |
| 40 | 1.3.1 | Planificacion Diseño | 1h | 2011-05-18 19:00 A | 2011-05-18 20:00 A |  | 100% |  |
| 41 | 1.3.2 | **Krutchen 4 + 1** | 13.33d | 2011-05-18 20:00 A | 2011-06-02 21:00 A |  | 100% |  |
| 42 | 1.3.2.1 | Informe Final de Diseño | 40h | 2011-05-18 20:00 A | 2011-06-02 21:00 A | 40 | 100% |  |
| 43 | 1.3.3 | Diseño Guia Virtual y Actividades | 30h | 2011-06-03 18:00 A | 2011-06-14 21:00 A | 42 | 100% |  |
| 44 | 1.3.4 | Especificacion de Casos de Uso | 20h | 2011-06-15 18:00 A | 2011-06-22 20:00 A | 43 | 100% |  |
| 45 | 1.3.5 | Hitos de Control | 20min | 2011-06-28 18:12 A | 2011-06-28 18:32 A | 44 | 100% |  |
| 46 | 1.3.6 | WBS Modificada | 4h | 2011-06-28 18:12 A | 2011-06-29 19:12 A | 45 | 100% |  |
| 47 | 1.3.7 | Carta Gantt Modificada | 3h | 2011-06-29 19:12 A | 2011-06-30 19:12 A | 46 | 100% |  |
| 48 | 1.3.8 | Plan de Administracion de Proyecto | 15h | 2011-09-22 18:00 A | 2011-09-27 21:00 A | 47 | 100% |  |
| 49 | 1.3.9 | Plan de Pruebas | 12h | 2011-09-27 18:00 A | 2011-09-30 21:00 A | 48 | 100% |  |
| 50 | 1.3.10 | Reacondicionar Diseño | 15h | 2011-09-08 18:00 A | 2011-09-13 21:00 A | 49 | 100% | start no earlier than 2011-09-01 18:00 |

| ID | WBS | Task | Duration | Start | Finish | Predecessors | Complete | Remaining | Total slack | Free slack | Constraint |
| --- | --- | --- | --- | --- | --- | --- | --- | --- | --- | --- | --- |
| 51 | 1.4 | **Implementacion** | 80.33d | 2011-09-08 20:00 A | 2011-11-23 21:00 | 39 | 41% | 47.15d | -19.33d | 0d |  |
| 52 | 1.4.1 | Planificacion Implementacion | 1h | 2011-09-08 20:00 A | 2011-09-08 21:00 A |  | 100% |  |  |  |  |
| 53 | 1.4.2 | 1era Version Plan de Gestion de la Configuracion | 15h | 2011-09-20 18:00 A | 2011-09-24 21:00 A | 52 | 100% |  |  |  |  |
| 54 | 1.4.3 | 2da Verion Plan de Gestion de la Configuracion | 1h | 2011-10-04 18:00 A | 2011-10-04 19:00 A | 53 | 100% |  |  |  | start no earlier than 2011-10-04 18:00 |
| 55 | 1.4.4 | 3era Version Plan de Gestion de la Configuracion | 20min | 2011-10-10 18:00 A | 2011-10-10 18:20 A | 54 | 100% |  |  |  | start no earlier than 2011-10-10 18:00 |
| 56 | 1.4.5 | **Codificacion de Software** | 74d | 2011-09-09 18:00 A | 2011-11-18 19:00 |  | 40% | 44.4d | -13.33d | 0d |  |
| 57 | 1.4.5.1 | Codificacion | 170h | 2011-09-09 18:00 A | 2011-11-07 19:00 | 52 | 49% | 86h | -231.33d | 0d |  |
| 58 | 1.4.5.2 | Pruebas Unitarias | 40h | 2011-11-07 19:00 | 2011-11-18 19:00 | 57 |  |  | -231.33d | 0d |  |
| 59 | 1.4.6 | Manual de Usuario | 8h | 2011-11-18 19:00 | 2011-11-21 19:00 | 56 |  |  | -231.33d | 0d |  |
| 60 | 1.4.7 | Hitos de Control | 3h | 2011-11-21 19:00 | 2011-11-21 22:00 | 59 |  |  | -231.33d | 0d |  |
| 61 | 1.4.8 | WBS Modificada | 4h | 2011-11-22 18:00 | 2011-11-22 22:00 | 60 |  |  | -231.33d | 0d |  |
| 62 | 1.4.9 | Carta Gantt Modificada | 3h | 2011-11-23 18:00 | 2011-11-23 21:00 | 61 |  |  | -231.33d | 0d |  |
| 63 | 1.5 | **Pruebas** | 16.33d | 2011-11-23 21:00 | 2011-12-09 21:00 | 51 |  |  | -231.33d | 0d |  |
| 64 | 1.5.1 | Planificacion Pruebas | 1h | 2011-11-23 21:00 | 2011-11-23 22:00 |  |  |  | -231.33d | 0d |  |
| 65 | 1.5.2 | **Ejecutar Plan de Pruebas** | 5d | 2011-11-24 18:00 | 2011-11-28 21:00 | 64 |  |  | -231.33d | 0d |  |
| 66 | 1.5.2.1 | Pruebas de Validacion | 3h | 2011-11-24 18:00 | 2011-11-24 21:00 | 64 |  |  | -231.33d | 0d |  |
| 67 | 1.5.2.2 | Pruebas de Verificacion | 3h | 2011-11-24 21:00 | 2011-11-25 20:00 | 66 |  |  | -231.33d | 0d |  |
| 68 | 1.5.2.3 | Pruebas de Casos de Uso | 3h | 2011-11-25 20:00 | 2011-11-26 19:00 | 67 |  |  | -231.33d | 0d |  |
| 69 | 1.5.2.4 | Pruebas de Integracion | 2h | 2011-11-26 19:00 | 2011-11-26 21:00 | 68 |  |  | -231.33d | 0d |  |
| 70 | 1.5.2.5 | Pruebas de Aceptacion | 4h | 2011-11-26 21:00 | 2011-11-28 21:00 | 69 |  |  | -231.33d | 0d |  |
| 71 | 1.5.3 | Matriz de Pruebas | 8.67d | 2011-11-28 21:00 | 2011-12-07 20:00 | 65 |  |  | -231.33d | 0d |  |
| 72 | 1.5.4 | Hitos de Control | 10min | 2011-12-07 20:00 | 2011-12-07 20:10 | 71 |  |  | -229.06d | 0d |  |
| 73 | 1.5.5 | WBS Modificada | 4h | 2011-12-07 20:00 | 2011-12-08 21:00 | 71 |  |  | -231.33d | 0d |  |
| 74 | 1.5.6 | Carta Gantt Modificada | 3h | 2011-12-09 18:00 | 2011-12-09 21:00 | 73 |  |  | -231.33d | 0d |  |

| ID | WBS | Task | Duration | Start | Finish | Predecessors | Total slack | Free slack |
| --- | --- | --- | --- | --- | --- | --- | --- | --- |
| 75 | 1.6 | **Implantacion** | 5d | 2011-12-10 18:00 | 2011-12-15 21:00 | 63 | -231.33d | 0d |
| 76 | 1.6.1 | Planificacion Implantacion | 1h | 2011-12-10 18:00 | 2011-12-10 19:00 |  | -231.33d | 0d |
| 77 | 1.6.2 | Capacitacion | 3h | 2011-12-10 19:00 | 2011-12-12 19:00 | 76 | -227.67d | 0d |
| 78 | 1.6.3 | **Recopilacion Experiencias Adquiridas** | 2d | 2011-12-10 19:00 | 2011-12-13 19:00 |  | -231.33d | 0d |
| 79 | 1.6.3.1 | Informe Rec. Experiencias del Proyecto | 6h | 2011-12-10 19:00 | 2011-12-13 19:00 | 76 | -231.33d | 0d |
| 80 | 1.6.4 | Hitos de Control | 10min | 2011-12-13 19:00 | 2011-12-13 19:10 | 79 | -228.72d | 0d |
| 81 | 1.6.5 | WBS Modificada | 4h | 2011-12-13 19:00 | 2011-12-14 20:00 | 79 | -231.33d | 0d |
| 82 | 1.6.6 | Carta Gantt Modificada | 4h | 2011-12-14 20:00 | 2011-12-15 21:00 | 81 | -231.33d | 0d |
